# ABP Planificacion

Schedule from MS Project, 2018-09-10 to 2019-05-06, costs in €, A marks actual dates.

## Calendars

- Estándar: Mon-Fri 09:00-13:00, 15:00-19:00; Sat-Sun off.

## Resources

| Resource | Rate | Cost per use |
| --- | --- | --- |
| Débora Galdeano González | 18 | 18 |
| Marines Ánton Castelló | 18 | 18 |
| María Sánchez Marqués | 18 | 18 |
| Jose Ramon Barea Cecilia | 18 | 18 |
| David Ramón Sevilla | 18 | 18 |
| Jose Vicente Anton Coy | 18 | 18 |
| Jesus Valiente | 18 | 18 |

## Schedule

| ID | WBS | Task | Type | Duration | Start | Finish | Predecessors | Complete | Remaining | Total slack | Free slack | Constraint | Resources | Work | Cost |
| --- | --- | --- | --- | --- | --- | --- | --- | --- | --- | --- | --- | --- | --- | --- | --- |
| 1 | 1 | **Hito 0** |  | 22.2d | 2018-09-10 A | 2018-10-10 |  | 78% | 4.81d | 148.8d | 0d |  |  |  |  |
| 2 | 1.1 | **Iteracion 1** |  | 16.2d | 2018-09-10 A | 2018-10-02 A |  | 100% |  |  |  |  |  |  |  |
| 3 | 1.1.1 | [PM]Rellenar documento de Concepto del proyecto |  | 9.6h | 2018-09-10 A | 2018-09-11 A |  | 100% |  |  |  | start no earlier than 2018-09-10 |  |  |  |
| 4 | 1.1.2 | [PM]Rellenar Version inicial del documento Especificacion |  | 9.6h | 2018-10-01 A | 2018-10-02 A |  | 100% |  |  |  |  |  |  |  |
| 5 | 1.2 | **Iteracion 2** |  | 7.2d | 2018-10-01 A | 2018-10-10 |  | 75% | 1.8d | 148.8d |  |  |  |  |  |
| 6 | 1.2.1 | [PM]Completar y Revisar documento Especificacion |  | 9.6h | 2018-10-01 A | 2018-10-02 |  | 75% | 2.4h | 154.8d |  |  |  |  |  |
| 7 | 1.2.2 | [PM]Crear WBS del proyecto project |  | 28.8h | 2018-10-01 A | 2018-10-04 A |  | 100% |  |  |  |  |  |  |  |
| 8 | 1.2.3 | [PM]Crear plan general (tareas y precedencias basicas) en project |  | 28.8h | 2018-10-01 | 2018-10-04 |  |  |  | 152.4d |  |  |  |  |  |
| 9 | 1.2.4 | [PM]Elaborar el Presupuesto(hoja de calculo) |  | 57.6h | 2018-10-01 A | 2018-10-10 A |  | 100% |  |  |  |  |  |  |  |
| 10 | 2 | Documento de Especificaciones realizado | milestone | 0d | 2018-10-10 | 2018-10-10 | 1 |  |  | 148.8d |  | start no earlier than 2018-10-10 |  |  |  |
| 11 | 3 | **Hito 1** |  | 52d | 2018-10-11 | 2018-12-21 |  |  |  | 9.75d | 0d | start no earlier than 2018-10-11 |  | 337.41h | 6,306.35 |
| 12 | 3.1 | **Iteracion 3** |  | 12d | 2018-10-11 | 2018-10-26 |  |  |  | 9.75d |  | start no earlier than 2018-10-11 |  | 177.04h | 3,297.06 |
| 13 | 3.1.1 | [V1]Documento de diseño de mecánicas de los NPCs |  | 27h | 2018-10-11 | 2018-10-16 |  |  |  | 129.62d | 0d |  | David Ramón Sevilla [25%]; Débora Galdeano González [12%]; Jose Vicente Anton Coy [25%]; Marines Ánton Castelló [25%] | 23.49h | 438.48 |
| 14 | 3.1.2 | [v1] Documento de diseño de toma de decision: espacio y metodos |  | 32h | 2018-10-16 | 2018-10-22 | 13 |  |  | 129.62d | 0d |  | David Ramón Sevilla [15%]; Jose Vicente Anton Coy [20%]; Marines Ánton Castelló [20%]; Débora Galdeano González [5%] | 19.2h | 356.4 |
| 15 | 3.1.3 | [V1]Documento de diseño técnico del motor de IA |  | 37h | 2018-10-22 | 2018-10-26 | 14 |  |  | 129.62d | 3.75d |  | David Ramón Sevilla [25%]; Débora Galdeano González [12%]; Jose Vicente Anton Coy [25%]; Marines Ánton Castelló [25%] | 32.19h | 595.08 |
| 16 | 3.1.4 | [V2]Diseño e implementación b.objetos (1/10) |  | 7h | 2018-10-11 | 2018-10-11 |  |  |  | 147.12d |  |  | Jose Ramon Barea Cecilia [50%]; María Sánchez Marqués [50%] | 7h | 144 |
| 17 | 3.1.5 | [TDS]Grabaciones propias |  | 32h | 2018-10-11 | 2018-10-16 |  |  |  | 137.62d | 11.75d |  | David Ramón Sevilla [15%]; Débora Galdeano González [12%]; Jose Vicente Anton Coy [25%]; Marines Ánton Castelló [25%] | 24.64h | 457.38 |
| 18 | 3.1.6 | [TDS]Síntesis |  | 20h | 2018-10-11 | 2018-10-15 |  |  |  | 145.5d |  |  | David Ramón Sevilla [18%]; Jose Ramon Barea Cecilia [30%]; María Sánchez Marqués [30%]; Débora Galdeano González [18%] | 19.2h | 362.88 |
| 19 | 3.1.7 | [RV]Boceto de los personajes |  | 30h | 2018-10-11 | 2018-10-16 |  |  |  | 144.25d |  |  | Débora Galdeano González [10%] | 3h | 55.8 |
| 20 | 3.1.8 | [PD]Vídeo con animación del logo de la empresa |  | 60h | 2018-10-11 | 2018-10-22 |  |  |  | 140.5d |  |  | Jose Ramon Barea Cecilia [20%]; Jose Vicente Anton Coy [20%]; Marines Ánton Castelló [20%]; David Ramón Sevilla [20%] | 48h | 878.4 |
| 21 | 3.1.9 | [PM]Registrar tiempos y % de realización de tareas en Project |  | 2h | 2018-10-24 | 2018-10-24 |  |  |  | 0d |  | must finish on 2018-10-24 | David Ramón Sevilla [2%]; Débora Galdeano González [2%]; Jose Ramon Barea Cecilia [4%]; Jose Vicente Anton Coy [2%]; María Sánchez Marqués [4%]; Marines Ánton Castelló [2%] | 0.32h | 8.64 |
| 22 | 3.2 | **Iteracion 4** |  | 42d | 2018-10-25 | 2018-12-21 |  |  |  | 96d |  | start no earlier than 2018-10-25 |  | 102.72h | 1,906.29 |
| 23 | 3.2.1 | [PM]Rellenar documento Gestión de riesgos |  | 23.04h | 2018-10-25 | 2018-10-29 |  |  |  | 135.12d |  |  | David Ramón Sevilla [2%]; Débora Galdeano González [2%]; Jose Ramon Barea Cecilia [2%]; María Sánchez Marqués [2%]; Marines Ánton Castelló [2%]; Jose Vicente Anton Coy [2%] | 2.76h | 51.93 |
| 24 | 3.2.2 | [RV]Bocetos de los elementos |  | 18h | 2018-10-25 | 2018-10-29 |  |  |  | 135.75d |  |  | Débora Galdeano González [8%]; Marines Ánton Castelló [8%]; María Sánchez Marqués [8%] | 4.32h | 82.08 |
| 25 | 3.2.3 | [V1]Sistema de toma de decisión con Behaviour Trees |  | 51h | 2018-11-01 | 2018-11-12 | 26, 17, 15 |  |  | 125.88d |  |  | David Ramón Sevilla [15%]; Débora Galdeano González [15%]; Jose Vicente Anton Coy [15%]; Marines Ánton Castelló [15%] | 30.6h | 561.6 |
| 26 | 3.2.4 | [V1]Sistema de percepción sensorial (vista, oído, olfato, canales…) |  | 46h | 2018-10-25 | 2018-11-01 | 13 |  |  | 125.88d | 0d |  | David Ramón Sevilla [15%]; Débora Galdeano González [15%]; Jose Vicente Anton Coy [15%]; Marines Ánton Castelló [15%] | 27.6h | 507.6 |
| 27 | 3.2.5 | [V2]Diseño e implementación b.objetos (2/10) |  | 7h | 2018-10-25 | 2018-10-25 |  |  |  | 137.12d |  |  |  |  |  |
| 28 | 3.2.6 | [v2]Diseño e implementacion b.componentes 1 |  | 10h | 2018-10-25 | 2018-10-26 |  |  |  | 136.75d |  | start no earlier than 2018-10-01 |  |  |  |
| 29 | 3.2.7 | [v2]Utilización de joints en las mecánicas jugables |  | 17h | 2018-10-25 | 2018-10-29 |  |  |  | 135.88d |  |  | David Ramón Sevilla [10%]; Débora Galdeano González [10%]; Jose Ramon Barea Cecilia [10%]; Jose Vicente Anton Coy [10%]; María Sánchez Marqués [10%]; Marines Ánton Castelló [10%] | 10.2h | 194.4 |
| 30 | 3.2.8 | [V2]Mecánicas básicas entidades sin IA |  | 30h | 2018-10-25 | 2018-10-30 |  |  |  | 134.25d |  |  | David Ramón Sevilla [15%]; Débora Galdeano González [15%]; Jose Ramon Barea Cecilia [15%]; Jose Vicente Anton Coy [15%]; María Sánchez Marqués [15%]; Marines Ánton Castelló [15%] | 27h | 502.2 |
| 31 | 3.2.9 | [PM]Registrar tiempos y % de realización de tareas en Project |  | 2h | 2018-12-21 | 2018-12-21 |  |  |  | 96d |  | finish no earlier than 2018-12-21 | David Ramón Sevilla [2%]; Débora Galdeano González [2%]; Jose Ramon Barea Cecilia [2%]; Jose Vicente Anton Coy [2%]; María Sánchez Marqués [2%]; Marines Ánton Castelló [2%] | 0.24h | 6.48 |

| ID | WBS | Task | Type | Duration | Start | Finish | Predecessors | Total slack | Free slack | Constraint | Resources | Work | Cost |
| --- | --- | --- | --- | --- | --- | --- | --- | --- | --- | --- | --- | --- | --- |
| 32 | 3.3 | **Iteracion 5** |  | 5.76d | 2018-11-08 | 2018-11-15 |  | 122.24d |  | start no earlier than 2018-11-08 |  | 39.65h | 746.6 |
| 33 | 3.3.1 | [PM]Aplicar el modelo EVA en Project |  | 21.6h | 2018-11-08 | 2018-11-12 |  | 125.3d |  |  | David Ramón Sevilla [8%]; Débora Galdeano González [8%]; Jose Ramon Barea Cecilia [8%]; Jose Vicente Anton Coy [8%]; María Sánchez Marqués [8%]; Marines Ánton Castelló [8%]; Jesus Valiente | 10.37h | 195.26 |
| 34 | 3.3.2 | [PM]Detallar plan iteraciones del mes de Noviembre. Creación Subtareas y precedencias en Project |  | 23.04h | 2018-11-08 | 2018-11-12 |  | 122.24d | 0d |  | Jose Vicente Anton Coy [20%]; David Ramón Sevilla [15%] | 8.06h | 151.45 |
| 35 | 3.3.3 | [PM]Detallar plan iteraciones del mes de Noviembre. Asignar recursos a las tareas en Project |  | 23.04h | 2018-11-12 | 2018-11-15 | 34 | 122.24d |  |  | David Ramón Sevilla [20%]; Jose Vicente Anton Coy [20%] | 9.22h | 173.09 |
| 36 | 3.3.4 | [TDS]Sonidos externos |  | 20h | 2018-11-08 | 2018-11-12 |  | 125.5d |  |  | David Ramón Sevilla [15%]; Jose Ramon Barea Cecilia [15%]; María Sánchez Marqués [15%]; Débora Galdeano González [15%] | 12h | 226.8 |
| 37 | 3.3.5 | [V2]Diseño e implementación b.objetos (3/10) |  | 7h | 2018-11-08 | 2018-11-08 |  | 127.12d |  |  |  |  |  |
| 38 | 3.3.6 | [v2]Diseño e implementacion b.componentes 2 |  | 10h | 2018-11-08 | 2018-11-09 |  | 126.75d |  | start no earlier than 2018-10-15 |  |  |  |
| 39 | 3.3.7 | [v2]Formato propio para la definicion de los niveles(documentos con la especifiacion del formato) |  | 11h | 2018-11-08 | 2018-11-09 |  | 123.12d | 0d |  |  |  |  |
| 40 | 3.3.8 | [V2]Creación de un cargador de niveles |  | 28h | 2018-11-09 | 2018-11-14 | 39 | 123.12d |  |  |  |  |  |
| 41 | 3.3.9 | [v2]Control del player: movimiento y colisiones sin motor de físicas |  | 40h | 2018-11-08 | 2018-11-14 |  | 123d |  |  |  |  |  |
| 42 | 3.3.10 | [v2]Implementacion de camara de seguimiento |  | 17h | 2018-11-08 | 2018-11-12 |  | 125.88d |  |  |  |  |  |
| 43 | 3.4 | **Iteracion 6** |  | 10.12d | 2018-11-22 | 2018-12-06 |  | 107.88d |  | start no earlier than 2018-11-22 |  | 6h | 118.8 |
| 44 | 3.4.1 | [RV]Bocetos del entorno |  | 18h | 2018-11-22 | 2018-11-26 |  | 115.75d |  |  |  |  |  |
| 45 | 3.4.2 | [TDS]Cue Sheet |  | 10h | 2018-11-22 | 2018-11-23 |  | 116.75d |  |  | David Ramón Sevilla [15%]; Jose Ramon Barea Cecilia [15%]; María Sánchez Marqués [15%]; Débora Galdeano González [15%] | 6h | 118.8 |
| 46 | 3.4.3 | [V1]Sistema de distribución central de tiempo de proceso (Scheduling) |  | 41h | 2018-11-22 | 2018-11-29 |  | 107.88d | 0d |  |  |  |  |
| 47 | 3.4.4 | [v1]Gestión de recursos de IA con Level-of-Detail (LoD) |  | 40h | 2018-11-29 | 2018-12-06 | 46 | 107.88d |  |  |  |  |  |
| 48 | 3.4.5 | [V2]Diseño e implementación b.objetos (4/10) |  | 7h | 2018-11-22 | 2018-11-22 |  | 117.12d |  |  |  |  |  |
| 49 | 3.4.6 | [v2]Diseño e implementacion b.componentes 3 |  | 10h | 2018-11-22 | 2018-11-23 |  | 116.75d |  | start no earlier than 2018-10-29 |  |  |  |
| 50 | 3.4.7 | [V2]Utilización de propiedades físicas en las mecánicas jugables |  | 17h | 2018-11-22 | 2018-11-26 |  | 115.88d |  |  |  |  |  |
| 51 | 3.4.8 | [V2]Uso de trazado de rayos y otros tests de las físicas |  | 17h | 2018-11-22 | 2018-11-26 |  | 115.88d |  |  |  |  |  |
| 52 | 3.4.9 | [V2]Mecánicas de acción |  | 30h | 2018-11-22 | 2018-11-27 |  | 114.25d |  |  |  |  |  |
| 53 | 3.5 | **Iteracion 7** |  | 7.5d | 2018-12-06 | 2018-12-17 |  | 100.5d |  | start no earlier than 2018-12-06 |  | 12h | 237.6 |
| 54 | 3.5.1 | [PM]Detallar plan iteraciones del mes de Diciembre. Creación Subtareas y precedencias en Project |  | 23.04h | 2018-12-06 | 2018-12-10 |  | 102.24d | 0d |  |  |  |  |
| 55 | 3.5.2 | [PM]Detallar plan iteraciones del mes de Diciembre. Asignar recursos a las tareas en Project |  | 23.04h | 2018-12-10 | 2018-12-13 | 54 | 102.24d |  |  |  |  |  |
| 56 | 3.5.3 | [TDS]Integración del motor de audio en el juego con prueba de concepto |  | 10h | 2018-12-06 | 2018-12-07 |  | 106.75d |  |  | David Ramón Sevilla [15%]; Jose Ramon Barea Cecilia [15%]; María Sánchez Marqués [15%]; Débora Galdeano González [15%] | 6h | 118.8 |
| 57 | 3.5.4 | [PD]Cartel juego/proyecto |  | 60h | 2018-12-06 | 2018-12-17 |  | 100.5d |  |  |  |  |  |
| 58 | 3.5.5 | [TDS]Hoja de metadatos |  | 10h | 2018-12-06 | 2018-12-07 |  | 106.75d |  |  | David Ramón Sevilla [15%]; Jose Ramon Barea Cecilia [15%]; María Sánchez Marqués [15%]; Débora Galdeano González [15%] | 6h | 118.8 |
| 59 | 3.5.6 | [V2]Diseño e implementación b.objetos (5/10) |  | 7h | 2018-12-06 | 2018-12-06 |  | 107.12d |  |  |  |  |  |
| 60 | 3.5.7 | [v2]Diseño e implementacion b.componentes 5 |  | 10h | 2018-12-06 | 2018-12-07 |  | 106.75d |  | start no earlier than 2018-11-26 |  |  |  |
| 61 | 3.5.8 | [v2]Mecanicas de puzzle |  | 32h | 2018-12-06 | 2018-12-11 |  | 104d |  |  |  |  |  |
| 62 | 3.5.9 | [V2]Mecánicas de rol |  | 30h | 2018-12-06 | 2018-12-11 |  | 104.25d |  |  |  |  |  |
| 63 | 3.5.10 | [v2]Uso de sistema de depuración visual de las físicas |  | 10h | 2018-12-06 | 2018-12-07 |  | 106.75d |  |  |  |  |  |
| 64 | 3.5.11 | [v2]Power-ups y elementos adicionales |  | 28h | 2018-12-06 | 2018-12-11 |  | 104.5d |  |  |  |  |  |
| 65 | 3.6 | [PM]Comparar la planificación prevista y real en Project hito 1 |  | 21.6h | 2018-10-11 | 2018-10-15 |  | 139d | 0d |  |  |  |  |
| 66 | 3.7 | [PM]Confeccionar Informes de iteración e informe resumen de Hito 1 |  | 21.6h | 2018-10-15 | 2018-10-18 | 65 | 139d | 0d |  |  |  |  |
| 67 | 3.8 | [PM]Elaborar la presentación del Hito 1 |  | 14.4h | 2018-10-18 | 2018-10-22 | 66 | 139d | 0d |  |  |  |  |
| 68 | 3.9 | [PM]Exponer la presentación del Hito 1 |  | 14.4h | 2018-10-22 | 2018-10-23 | 67 | 139d |  |  |  |  |  |
| 69 | 4 | Versión Alpha de mecánicas | milestone | 0d | 2018-12-22 | 2018-12-22 | 11 | 96d |  | start no earlier than 2018-12-22 |  |  |  |

| ID | WBS | Task | Type | Duration | Start | Finish | Predecessors | Total slack | Free slack | Constraint | Deadline |
| --- | --- | --- | --- | --- | --- | --- | --- | --- | --- | --- | --- |
| 70 | 5 | **Hito 2** |  | 15.25d? | 2018-12-24 | 2019-01-14 |  | 9.75d | 0d |  | 2019-01-25 |
| 71 | 5.1 | **Navidad** |  | 1.25d? | 2018-12-24 | 2018-12-25 |  | 23.75d |  | start no earlier than 2018-12-22 |  |
| 72 | 5.1.1 | [V2]Diseño e implementación b.objetos (6/10) |  | 7h | 2018-12-24 | 2018-12-24 |  | 24.12d |  |  |  |
| 73 | 5.1.2 | [v2]Diseño e implementacion b.componentes 6 |  | 10h | 2018-12-24 | 2018-12-25 |  | 23.75d |  | start no earlier than 2018-12-10 |  |
| 74 | 5.1.3 | <Tarea nueva> |  | 1d? | 2018-12-24 | 2018-12-24 |  | 24d |  |  |  |
| 75 | 5.2 | **Iteracion 8** |  | 1.25d? | 2019-01-11 | 2019-01-14 |  | 9.75d |  | start no earlier than 2019-01-11 |  |
| 76 | 5.2.1 | [V2]Diseño e implementación b.objetos (7/10) |  | 7h | 2019-01-11 | 2019-01-11 |  | 10.12d |  |  |  |
| 77 | 5.2.2 | [v2]Diseño e implementacion b.componentes 7 |  | 10h | 2019-01-11 | 2019-01-14 |  | 9.75d |  | start no earlier than 2018-12-24 |  |
| 78 | 5.2.3 | <Tarea nueva> |  | 1d? | 2019-01-11 | 2019-01-11 |  | 10d |  |  |  |
| 79 | 5.3 | [PM]Revisar especificación proyecto |  | 1d | 2018-12-24 | 2018-12-24 |  | 24d |  | start no earlier than 2018-12-22 |  |
| 80 | 5.4 | [PM]Reestimar proyecto |  | 1d? | 2018-12-24 | 2018-12-24 |  | 24d |  | start no earlier than 2018-12-22 |  |
| 81 | 5.5 | [PM]Detallar plan iteraciones del mes de Enero. Creación Subtareas y precedencias en Project |  | 1d? | 2018-12-24 | 2018-12-24 |  | 24d |  | start no earlier than 2018-12-22 |  |
| 82 | 5.6 | [PM]Detallar plan iteraciones del mes de Enero. Asignar recursos a las tareas en Project |  | 1d? | 2018-12-24 | 2018-12-24 |  | 24d |  | start no earlier than 2018-12-22 |  |
| 83 | 5.7 | [PM]Registrar tiempos y % de realización de tareas en Project |  | 1d? | 2018-12-24 | 2018-12-24 |  | 24d |  | start no earlier than 2018-12-22 |  |
| 84 | 5.8 | [PM]Comparar la planificación prevista y real en Project hito 2 |  | 1d? | 2018-12-24 | 2018-12-24 |  | 24d |  | start no earlier than 2018-12-22 |  |
| 85 | 5.9 | [PM]Confeccionar Informes de iteración e informe resumen de Hito 2 |  | 1d? | 2018-12-24 | 2018-12-24 |  | 24d |  | start no earlier than 2018-12-22 |  |
| 86 | 5.10 | [V1]Sistema de depuración visual in-game de la IA |  | 1d | 2018-12-24 | 2018-12-24 |  | 24d |  | start no earlier than 2018-12-22 |  |
| 87 | 5.11 | [V1]Sistema de distribución central de tiempo de proceso (Scheduling) |  | 1d? | 2018-12-24 | 2018-12-24 |  | 24d |  | start no earlier than 2018-12-22 |  |
| 88 | 5.12 | [V2]Power-ups y elementos adicionales |  | 1d | 2018-12-24 | 2018-12-24 |  | 24d |  | start no earlier than 2018-12-22 |  |
| 89 | 5.13 | [V2]Integración de librería para GUI |  | 1d | 2018-12-24 | 2018-12-24 |  | 24d |  | start no earlier than 2018-12-22 |  |
| 90 | 5.14 | [V2]Implementación de menús |  | 1d | 2018-12-24 | 2018-12-24 |  | 24d |  | start no earlier than 2018-12-22 |  |
| 91 | 5.15 | [V2]Implementación del HUD |  | 1d | 2018-12-24 | 2018-12-24 |  | 24d |  | start no earlier than 2018-12-22 |  |
| 92 | 5.16 | [PD]Trailer juego/proyecto |  | 1d | 2018-12-24 | 2018-12-24 |  | 24d |  | start no earlier than 2018-12-22 |  |
| 93 | 5.17 | [PD]Making of juego/proyecto |  | 1d | 2018-12-24 | 2018-12-24 |  | 24d |  | start no earlier than 2018-12-22 |  |
| 94 | 5.18 | [RV]Modelado de los personajes |  | 1d | 2018-12-24 | 2018-12-24 |  | 24d |  | start no earlier than 2018-12-22 |  |
| 95 | 5.19 | [RV]Texturizado de los personajes |  | 1d | 2018-12-24 | 2018-12-24 |  | 24d |  | start no earlier than 2018-12-22 |  |
| 96 | 5.20 | [RV]Modelado del entorno y elementos |  | 1d | 2018-12-24 | 2018-12-24 |  | 24d |  | start no earlier than 2018-12-22 |  |
| 97 | 6 | Version Beta del juego, que se pueda jugar | milestone | 0d | 2019-01-14 | 2019-01-14 | 70 | 80.75d |  | start no earlier than 2018-12-22 |  |

| ID | WBS | Task | Type | Duration | Start | Finish | Predecessors | Total slack | Free slack | Constraint |
| --- | --- | --- | --- | --- | --- | --- | --- | --- | --- | --- |
| 98 | 7 | **Hito 3** |  | 30d? | 2019-01-24 | 2019-03-06 |  | 14d | 0d | finish no later than 2019-03-26 |
| 99 | 7.1 | **Iteracion 9** |  | 1.25d? | 2019-01-25 | 2019-01-28 |  | 41.75d |  | start no earlier than 2019-01-25 |
| 100 | 7.1.1 | [V2]Diseño e implementación b.objetos (8/10) |  | 7h | 2019-01-25 | 2019-01-25 |  | 42.12d |  |  |
| 101 | 7.1.2 | [v2]Diseño e implementacion b.componentes 8 |  | 10h | 2019-01-25 | 2019-01-28 |  | 41.75d |  | start no earlier than 2019-01-07 |
| 102 | 7.1.3 | <Tarea nueva> |  | 1d? | 2019-01-25 | 2019-01-25 |  | 42d |  |  |
| 103 | 7.2 | **Iteracion 10** |  | 1.25d? | 2019-02-06 | 2019-02-07 |  | 33.75d |  | start no earlier than 2019-02-06 |
| 104 | 7.2.1 | [V2]Diseño e implementación b.objetos (9/10) |  | 7h | 2019-02-06 | 2019-02-06 |  | 34.12d |  |  |
| 105 | 7.2.2 | [v2]Diseño e implementacion b.componentes 9 |  | 10h | 2019-02-06 | 2019-02-07 |  | 33.75d |  | start no earlier than 2019-01-21 |
| 106 | 7.2.3 | <Tarea nueva> |  | 1d? | 2019-02-06 | 2019-02-06 |  | 34d |  |  |
| 107 | 7.3 | **Iteracion 11** |  | 1.25d? | 2019-02-20 | 2019-02-21 |  | 23.75d |  | start no earlier than 2019-02-20 |
| 108 | 7.3.1 | [V2]Diseño e implementación b.objetos (final) |  | 7h | 2019-02-20 | 2019-02-20 |  | 24.12d |  |  |
| 109 | 7.3.2 | [v2]Diseño e implementacion b.componentes (final) |  | 10h | 2019-02-20 | 2019-02-21 |  | 23.75d |  | start no earlier than 2019-02-04 |
| 110 | 7.3.3 | <Tarea nueva> |  | 1d? | 2019-02-20 | 2019-02-20 |  | 24d |  |  |
| 111 | 7.4 | **Iteracion 12** |  | 1d? | 2019-03-06 | 2019-03-06 |  | 14d |  | start no earlier than 2019-03-06 |
| 112 | 7.4.1 | <Tarea nueva> |  | 1d? | 2019-03-06 | 2019-03-06 |  | 14d |  |  |
| 113 | 7.5 | [PM]Detallar plan iteraciones del mes de Febrero-Marzo. Creación Subtareas y precedencias en Project |  | 1d | 2019-01-24 | 2019-01-24 |  | 43d |  | start no earlier than 2019-01-24 |
| 114 | 7.6 | [PM]Detallar plan iteraciones del mes de Febrero-Marzo Asignar recursos a las tareas en Project |  | 1d? | 2019-01-24 | 2019-01-24 |  | 43d |  | start no earlier than 2019-01-24 |
| 115 | 7.7 | [PM]Registrar tiempos y % de realización de tareas en Project |  | 1d? | 2019-01-24 | 2019-01-24 |  | 43d |  | start no earlier than 2019-01-24 |
| 116 | 7.8 | [PM]Comparar la planificación prevista y real en Project hito 3 |  | 1d? | 2019-01-24 | 2019-01-24 |  | 43d |  | start no earlier than 2019-01-24 |
| 117 | 7.9 | [PM]Confeccionar Informes de iteración e informe resumen de Hito 3 |  | 1d? | 2019-01-24 | 2019-01-24 |  | 43d |  | start no earlier than 2019-01-24 |
| 118 | 7.10 | [PM]Elaborar la presentación del Hito 3 |  | 1d? | 2019-01-24 | 2019-01-24 |  | 43d |  | start no earlier than 2019-01-24 |
| 119 | 7.11 | [PM]Exponer la presentación del Hito 3 |  | 1d? | 2019-01-24 | 2019-01-24 |  | 43d |  | start no earlier than 2019-01-24 |
| 120 | 7.12 | [TAG]Estructura básica del nodo (array de hijos, puntero a padre, puntero a entidad, funcionalidad básica -constructor, destructor, gets, sets, manejo de hijos….) |  | 1d? | 2019-01-24 | 2019-01-24 |  | 43d |  | start no earlier than 2019-01-24 |
| 121 | 7.13 | [TAG]Recorrido-dibujado del árbol |  | 1d? | 2019-01-24 | 2019-01-24 |  | 43d |  | start no earlier than 2019-01-24 |
| 122 | 7.14 | [TAG]Estructura básica de la entidad (Constructor, destructor, funciones… todas virtuales, vacías) |  | 1d | 2019-01-24 | 2019-01-24 |  | 43d |  | start no earlier than 2019-01-24 |
| 123 | 7.15 | [TAG]Matrices (model, view, projection) y pila estáticas y su manejo |  | 1d? | 2019-01-24 | 2019-01-24 |  | 43d |  | start no earlier than 2019-01-24 |
| 124 | 7.16 | [TAG]Estructura básica de la transformación (Constructor, destructor, matriz transformación…) |  | 1d? | 2019-01-24 | 2019-01-24 |  | 43d |  | start no earlier than 2019-01-24 |
| 125 | 7.17 | [TAG]Operaciones de transformación (trasladar, rotar, escalar, identidad, trasponer, invertir, todas con GLM o GLMatrix) |  | 1d? | 2019-01-24 | 2019-01-24 |  | 43d |  | start no earlier than 2019-01-24 |
| 126 | 7.18 | [TAG]Dibujado (begindraw, enddraw, manejo pila y matriz model) |  | 1d? | 2019-01-24 | 2019-01-24 |  | 43d |  | start no earlier than 2019-01-24 |
| 127 | 7.19 | [TAG]Estructura básica de la cámara (Constructor, destructor, matriz proyección) |  | 1d? | 2019-01-24 | 2019-01-24 |  | 43d |  | start no earlier than 2019-01-24 |
| 128 | 7.20 | [TAG]Rellenar matriz perspectiva (con GLM o GLMatrix) |  | 1d | 2019-01-24 | 2019-01-24 |  | 43d |  | start no earlier than 2019-01-24 |
| 129 | 7.21 | [TAG]Estructura básica de la luz (Constructor, destructor) |  | 1d? | 2019-01-24 | 2019-01-24 |  | 43d |  | start no earlier than 2019-01-24 |
| 130 | 7.22 | [TAG]Datos y funciones luz puntual |  | 1d? | 2019-01-24 | 2019-01-24 |  | 43d |  | start no earlier than 2019-01-24 |
| 131 | 7.23 | [TAG]Estructura básica de la malla (Constructor, destructor) |  | 1d? | 2019-01-24 | 2019-01-24 |  | 43d |  | start no earlier than 2019-01-24 |
| 132 | 7.24 | [TAG]Datos de mallas, texturas, materiales… (llamadas al gestor de recursos) |  | 1d? | 2019-01-24 | 2019-01-24 |  | 43d |  | start no earlier than 2019-01-24 |
| 133 | 7.25 | [TAG]Dibujado de mallas (begindraw, enddraw, matriz model…) |  | 1d? | 2019-01-24 | 2019-01-24 |  | 43d |  | start no earlier than 2019-01-24 |
| 134 | 7.26 | [TAG]Estructura básica del gestor de recursos (constructor, destructor, vectores de recursos) |  | 1d? | 2019-01-24 | 2019-01-24 |  | 43d |  | start no earlier than 2019-01-24 |
| 135 | 7.27 | [TAG]Obtener recurso (gestión adecuada de memoria) |  | 1d? | 2019-01-24 | 2019-01-24 |  | 43d |  | start no earlier than 2019-01-24 |
| 136 | 7.28 | [TAG]Estructura básica del recurso (constructor, destructor. Es virtual, vacío) |  | 1d? | 2019-01-24 | 2019-01-24 |  | 43d |  | start no earlier than 2019-01-24 |
| 137 | 7.29 | [TAG]Estructura básica de la malla (constructor, destructor) |  | 1d? | 2019-01-24 | 2019-01-24 |  | 43d |  | start no earlier than 2019-01-24 |
| 138 | 7.30 | [TAG]Lectura de disco (con assimp) |  | 1d? | 2019-01-24 | 2019-01-24 |  | 43d |  | start no earlier than 2019-01-24 |
| 139 | 7.31 | [TAG]Creación de buffers de vértices, normales, índices… y relleno |  | 1d? | 2019-01-24 | 2019-01-24 |  | 43d |  | start no earlier than 2019-01-24 |
| 140 | 7.32 | [TAG]Dibujado de las mallas (draw, con paso de los buffers a OpenGL o WebGL) |  | 1d? | 2019-01-24 | 2019-01-24 |  | 43d |  | start no earlier than 2019-01-24 |
| 141 | 7.33 | [TAG]Estructura básica del material (constructor, destructor) |  | 1d? | 2019-01-24 | 2019-01-24 |  | 43d |  | start no earlier than 2019-01-24 |
| 142 | 7.34 | [TAG]Leer material de disco (con librería o con parser propio) y rellenar valores |  | 1d? | 2019-01-24 | 2019-01-24 |  | 43d |  | start no earlier than 2019-01-24 |
| 143 | 7.35 | [TAG]Dibujado de los materiales (preparar los materiales y cargarlos en OpenGL o WebGL) |  | 1d? | 2019-01-24 | 2019-01-24 |  | 43d |  | start no earlier than 2019-01-24 |
| 144 | 7.36 | [TAG]Estructura básica del shader (constructor, destructor) |  | 1d? | 2019-01-24 | 2019-01-24 |  | 43d |  | start no earlier than 2019-01-24 |
| 145 | 7.37 | [TAG]Lectura de shaders de disco (con parser propio) y guardarlo |  | 1d? | 2019-01-24 | 2019-01-24 |  | 43d |  | start no earlier than 2019-01-24 |
| 146 | 7.38 | [TAG]Estructura básica de la interfaz (constructor, destructor, inicialización motor y openGL) |  | 1d? | 2019-01-24 | 2019-01-24 |  | 43d |  | start no earlier than 2019-01-24 |
| 147 | 7.39 | [TAG]Funciones para crear cámaras y gestionarlas (manejo de las cámaras, registro, cálculo de la matriz view) |  | 1d? | 2019-01-24 | 2019-01-24 |  | 43d |  | start no earlier than 2019-01-24 |
| 148 | 7.40 | [TAG]Funciones para crear luces y gestionarlas (manejo de las luces registro, cálculo de la matriz light) |  | 1d? | 2019-01-24 | 2019-01-24 |  | 43d |  | start no earlier than 2019-01-24 |
| 149 | 7.41 | [TAG]Funciones para crear transformaciones (creación de varios nodos con las transformaciones, manejo de las transformaciones) |  | 1d? | 2019-01-24 | 2019-01-24 |  | 43d |  | start no earlier than 2019-01-24 |
| 150 | 7.42 | [TAG]Funciones para crear mallas y animaciones |  | 1d? | 2019-01-24 | 2019-01-24 |  | 43d |  | start no earlier than 2019-01-24 |
| 151 | 7.43 | [TAG]Funciones para crear shaders y gestionarlos |  | 1d? | 2019-01-24 | 2019-01-24 |  | 43d |  | start no earlier than 2019-01-24 |
| 152 | 7.44 | [TAG]Shader básico (Sombreado de Phong, reflexión de Phong) con materiales |  | 1d? | 2019-01-24 | 2019-01-24 |  | 43d |  | start no earlier than 2019-01-24 |
| 153 | 7.45 | [TAG]Integración con la aplicación |  | 1d? | 2019-01-24 | 2019-01-24 |  | 43d |  | start no earlier than 2019-01-24 |
| 154 | 7.46 | [TAG]Realización de una fachada entre el motor y la aplicación o videojuego |  | 1d? | 2019-01-24 | 2019-01-24 |  | 43d |  | start no earlier than 2019-01-24 |
| 155 | 7.47 | [TAG]Librería matemática (GLM o GLMatrix) |  | 1d? | 2019-01-24 | 2019-01-24 |  | 43d |  | start no earlier than 2019-01-24 |
| 156 | 7.48 | [TAG][Solo CED] Librería de lectura de mallas (assimp…) |  | 1d? | 2019-01-24 | 2019-01-24 |  | 43d |  | start no earlier than 2019-01-24 |
| 157 | 7.49 | [TAG][Solo CED] Librería de ventanas, entrada/salida... (GLFW…) |  | 1d? | 2019-01-24 | 2019-01-24 |  | 43d |  | start no earlier than 2019-01-24 |
| 158 | 7.50 | [V1]Flocking: comportamiento grupal emergente |  | 1d | 2019-01-24 | 2019-01-24 |  | 43d |  | start no earlier than 2019-01-24 |
| 159 | 7.51 | [V1]Editor in-game de parámetros y comportamientos de la IA |  | 1d | 2019-01-24 | 2019-01-24 |  | 43d |  | start no earlier than 2019-01-24 |
| 160 | 7.52 | [V1]Sistema de logros y puntuaciones web |  | 1d | 2019-01-24 | 2019-01-24 |  | 43d |  | start no earlier than 2019-01-24 |
| 161 | 7.53 | [V2]Implementación de cesped y vegetación |  | 1d | 2019-01-24 | 2019-01-24 |  | 43d |  | start no earlier than 2019-01-24 |
| 162 | 7.54 | [V2]Implementación de nubes |  | 1d | 2019-01-24 | 2019-01-24 |  | 43d |  | start no earlier than 2019-01-24 |
| 163 | 7.55 | [V2]Implementación de sistemas de partículas |  | 1d | 2019-01-24 | 2019-01-24 |  | 43d |  | start no earlier than 2019-01-24 |
| 164 | 7.56 | [TDS]Resto de la biblioteca (máx. 1/3), cuesheet y metadatos finales |  | 1d | 2019-01-24 | 2019-01-24 |  | 43d |  | start no earlier than 2019-01-24 |
| 165 | 7.57 | <Tarea nueva> |  | 1d? | 2019-01-24 | 2019-01-24 |  | 43d |  | start no earlier than 2019-01-24 |
| 166 | 8 | Versión Producción - Lista para pulir | milestone | 0d | 2019-03-06 | 2019-03-06 | 98 | 43d |  | start no earlier than 2019-03-06 |

| ID | WBS | Task | Type | Duration | Start | Finish | Predecessors | Total slack | Constraint |
| --- | --- | --- | --- | --- | --- | --- | --- | --- | --- |
| 167 | 9 | **hito 4** |  | 29d? | 2019-03-27 | 2019-05-06 |  | 0d | finish no later than 2019-05-23 |
| 168 | 9.1 | **Iteracion 13** |  | 1d? | 2019-03-27 | 2019-03-27 |  | 28d | start no earlier than 2019-03-27 |
| 169 | 9.1.1 | <Tarea nueva> |  | 1d? | 2019-03-27 | 2019-03-27 |  | 28d |  |
| 170 | 9.2 | **Semana santa** |  | 1d? | 2019-04-17 | 2019-04-17 |  | 13d | start no earlier than 2019-04-17 |
| 171 | 9.2.1 | <Tarea nueva> |  | 1d? | 2019-04-17 | 2019-04-17 |  | 13d |  |
| 172 | 9.3 | **Iteracion 14** |  | 1d? | 2019-05-06 | 2019-05-06 |  | 0d | start no earlier than 2019-05-05 |
| 173 | 9.3.1 | <Tarea nueva> |  | 1d? | 2019-05-06 | 2019-05-06 |  | 0d |  |
| 174 | 9.4 | [PM]Detallar plan iteraciones del mes de Abril-Mayo. Creación Subtareas y precedencias en Project |  | 1d | 2019-03-27 | 2019-03-27 |  | 28d | start no earlier than 2019-03-27 |
| 175 | 9.5 | [PM]Detallar plan iteraciones del mes de Abril-Mayo. Asignar recursos a las tareas en Project |  | 1d? | 2019-03-27 | 2019-03-27 |  | 28d | start no earlier than 2019-03-27 |
| 176 | 9.6 | [PM]Registrar tiempos y % de realización de tareas en Project |  | 1d? | 2019-03-27 | 2019-03-27 |  | 28d | start no earlier than 2019-03-27 |
| 177 | 9.7 | [PM]Comparar la planificación prevista y real en Project hito 4 |  | 1d? | 2019-03-27 | 2019-03-27 |  | 28d | start no earlier than 2019-03-27 |
| 178 | 9.8 | [PM]Confeccionar Informes de iteración e informe resumen de Hito 4 |  | 1d? | 2019-03-27 | 2019-03-27 |  | 28d | start no earlier than 2019-03-27 |
| 179 | 9.9 | [PM]Elaborar la presentación del Hito 4 |  | 1d? | 2019-03-27 | 2019-03-27 |  | 28d | start no earlier than 2019-03-27 |
| 180 | 9.10 | [PM]Exponer la presentación del Hito 4 |  | 1d? | 2019-03-27 | 2019-03-27 |  | 28d | start no earlier than 2019-03-27 |
| 181 | 9.11 | [TAG]Estructura básica de la animación (Constructor, destructor) |  | 1d | 2019-03-27 | 2019-03-27 |  | 28d | start no earlier than 2019-03-27 |
| 182 | 9.12 | [TAG]Datos de animaciones, mallas, texturas, materiales (multiples, con llamadas al gestor de recursos) |  | 1d? | 2019-03-27 | 2019-03-27 |  | 28d | start no earlier than 2019-03-27 |
| 183 | 9.13 | [TAG]Dibujado de texturas (preparar las texturas y cargarlas en OpenGL o WebGL) |  | 1d? | 2019-03-27 | 2019-03-27 |  | 28d | start no earlier than 2019-03-27 |
| 184 | 9.14 | [TAG]Shader básico (Sombreado de Phong, reflexión de Phong) con materiales y texturas |  | 1d? | 2019-03-27 | 2019-03-27 |  | 28d | start no earlier than 2019-03-27 |
| 185 | 9.15 | [TAG]Shader Cartoon |  | 1d? | 2019-03-27 | 2019-03-27 |  | 28d | start no earlier than 2019-03-27 |
| 186 | 9.16 | [TAG]Bounding boxes (incluye retocar nodos, entidades y recursos malla) |  | 1d? | 2019-03-27 | 2019-03-27 |  | 28d | start no earlier than 2019-03-27 |
| 187 | 9.17 | [TAG]Backface culling |  | 1d? | 2019-03-27 | 2019-03-27 |  | 28d | start no earlier than 2019-03-27 |
| 188 | 9.18 | [TAG]Frustum culling |  | 1d? | 2019-03-27 | 2019-03-27 |  | 28d | start no earlier than 2019-03-27 |
| 189 | 9.19 | [TAG]Sombras proyectadas |  | 1d? | 2019-03-27 | 2019-03-27 |  | 28d | start no earlier than 2019-03-27 |
| 190 | 9.20 | [TAG]Sistema de partículas (sólo la incorporación en el motor) |  | 1d? | 2019-03-27 | 2019-03-27 |  | 28d | start no earlier than 2019-03-27 |
| 191 | 9.21 | [PD]Créditos |  | 1d | 2019-03-27 | 2019-03-27 |  | 28d | start no earlier than 2019-03-27 |
| 192 | 9.22 | [PD]Vídeo final juego / explicación parte del proyecto |  | 1d | 2019-03-27 | 2019-03-27 |  | 28d | start no earlier than 2019-03-27 |
| 193 | 9.23 | [TDS]Integración de sonido y música en el juego |  | 1d | 2019-03-27 | 2019-03-27 |  | 28d | start no earlier than 2019-03-27 |
| 194 | 9.24 | [TDS]Post producción (mezcla y masterización in-game) |  | 1d | 2019-03-27 | 2019-03-27 |  | 28d | start no earlier than 2019-03-27 |
| 195 | 9.25 | [TDS]Sonido generado proceduralmente in-game |  | 1d | 2019-03-27 | 2019-03-27 |  | 28d | start no earlier than 2019-03-27 |
| 196 | 9.26 | [RV]Rigging de los personajes |  | 1d | 2019-03-27 | 2019-03-27 |  | 28d | start no earlier than 2019-03-27 |
| 197 | 9.27 | [RV]Captura de movimiento |  | 1d | 2019-03-27 | 2019-03-27 |  | 28d | start no earlier than 2019-03-27 |
| 198 | 9.28 | [RV]Animación de los personajes |  | 1d | 2019-03-27 | 2019-03-27 |  | 28d | start no earlier than 2019-03-27 |
| 199 | 9.29 | [RV]Texturizado del entorno y elementos |  | 1d | 2019-03-27 | 2019-03-27 |  | 28d | start no earlier than 2019-03-27 |
| 200 | 10 | Version terminada | milestone | 0d | 2019-05-06 | 2019-05-06 | 167 | 0d | start no earlier than 2018-10-24 |
